# ProjM-MSProjetNeu

How a schedule from MS Project changed from version to version. A marks actual dates.

## Version 1 (saved 2025-06-15)

Note of the change: Final(?)

| ID | WBS | Task | Duration | Start | Finish | Predecessors | Complete | Total float |
| --- | --- | --- | --- | --- | --- | --- | --- | --- |
| 1 | 1 | **Initiation & Planning** | 7d | 2025-05-05 A | 2025-05-13 A |  | 100% |  |
| 2 |  | Kick-off Meeting | 1d | 2025-05-05 A | 2025-05-05 A |  | 100% |  |
| 3 |  | Stakeholder Identification | 2d | 2025-05-06 A | 2025-05-07 A | 2 | 100% |  |
| 4 |  | Define Project Scope & Objectives | 3d | 2025-05-06 A | 2025-05-08 A | 2 | 100% |  |
| 5 |  | Develop Project Charter | 3d | 2025-05-09 A | 2025-05-13 A | 4 | 100% |  |
| 6 |  | Initial Risk Assesment | 3d | 2025-05-09 A | 2025-05-13 A | 4 | 100% |  |
| 7 |  | Project Chart Approved | 0d | 2025-05-13 A | 2025-05-13 A | 5 | 100% |  |
| 8 | 2 | **Requirements Analysis** | 9d | 2025-05-14 A | 2025-05-26 A | 1 | 100% |  |
| 9 |  | Conduct Stakeholder Interviews | 1d | 2025-05-14 A | 2025-05-14 A | 1 | 100% |  |
| 10 |  | Define Functional Requirements | 5d | 2025-05-15 A | 2025-05-21 A | 9 | 100% |  |
| 11 |  | Validate Requirements | 3d | 2025-05-22 A | 2025-05-26 A | 10 | 100% |  |
| 12 |  | Requirements Finalized | 0d | 2025-05-26 A | 2025-05-26 A | 11 | 100% |  |
| 13 | 3 | **System design** | 9d | 2025-05-27 A | 2025-06-06 A | 8 | 100% |  |
| 14 |  | Design Architecture System (Backend, Frontend) | 4d | 2025-05-27 A | 2025-05-30 A | 12 | 100% |  |
| 15 |  | Database Design | 3d | 2025-06-02 A | 2025-06-04 A | 14 | 100% |  |
| 16 |  | UI/UX Design | 3d | 2025-06-02 A | 2025-06-04 A | 14 | 100% |  |
| 17 |  | Design Review | 2d | 2025-06-05 A | 2025-06-06 A | 15, 16 | 100% |  |
| 18 |  | Design Approved | 0d | 2025-06-06 A | 2025-06-06 A | 17 | 100% |  |
| 19 | 4 | **Development** | 120d | 2025-06-09 | 2025-11-21 | 18 |  | 0d |
| 20 | 4.1 | **Sprint 1 SP:** | 24d | 2025-06-09 | 2025-07-10 |  |  | 0d |
| 21 | 4.1.1 | **US #: 1, 2, 3, 6, 20, 23, 27, 34, 35, 43** | 24d | 2025-06-09 | 2025-07-10 | 18 |  | 0d |
| 22 |  | Set Up Dev Environment | 3d | 2025-06-09 | 2025-06-11 | 18 |  | 0d |
| 23 |  | Implement Student Registration& Login | 5d | 2025-06-12 | 2025-06-18 | 22 |  | 3d |
| 24 |  | Setup Role-based Dashboard Views | 3d | 2025-06-19 | 2025-06-23 | 23 |  | 3d |
| 25 |  | Build Profile Management (Student/Teachert/Admin) | 3d | 2025-06-24 | 2025-06-26 | 24 |  | 3d |
| 26 |  | Add Password Reset& Email Verification Workflow | 4d | 2025-06-27 | 2025-07-02 | 25 |  | 3d |
| 27 |  | Create Session Timeout& Logout Logic | 3d | 2025-07-03 | 2025-07-07 | 26 |  | 3d |
| 28 |  | Develop Course Management | 10d | 2025-06-12 | 2025-06-25 | 22 |  | 0d |
| 29 |  | Course Draft/Publish Toggle | 3d | 2025-06-26 | 2025-06-30 | 28 |  | 8d |
| 30 |  | Build Instructor Course Overview Page | 5d | 2025-06-26 | 2025-07-02 | 28 |  | 6d |
| 31 |  | Add Tags& Search Filters for Course Catalog | 3d | 2025-06-26 | 2025-06-30 | 28 |  | 8d |
| 32 |  | Implement Course Enrollment Workflow | 6d | 2025-06-26 | 2025-07-03 | 28 |  | 0d |
| 33 |  | Add Student Course Overview / My Schedule | 5d | 2025-07-04 | 2025-07-10 | 32 |  | 0d |
| 34 |  | Course Module Implemented | 0d | 2025-07-10 | 2025-07-10 | 33 |  | 0d |
| 35 | 4.2 | **Sprint 2 SP:** | 24d | 2025-07-11 | 2025-08-13 | 21 |  | 0d |
| 36 | 4.2.1 | **US #: 4, 5, 8, 17, 18, 19, 25, 28, 29, 32, 39, 40, 41, 44, 47** | 24d | 2025-07-11 | 2025-08-13 |  |  | 0d |
| 37 |  | Develop Learning Material Module | 12d | 2025-07-11 | 2025-07-28 | 21 |  | 0d |
| 38 |  | Implement Access Control for Materials | 5d | 2025-07-29 | 2025-08-04 | 37 |  | 0d |
| 39 |  | Add Media Upload | 2d | 2025-07-11 | 2025-07-14 | 34 |  | 20d |
| 40 |  | Add Restriction For Maximum MB Of Media Upload | 2d | 2025-08-05 | 2025-08-06 | 38 |  | 0d |
| 41 |  | Add File Storage System | 5d | 2025-08-07 | 2025-08-13 | 40 |  | 0d |
| 42 |  | Add Function To Set Submission Period | 2d | 2025-07-15 | 2025-07-16 | 39 |  | 20d |
| 43 |  | Add Media Download | 2d | 2025-07-11 | 2025-07-14 | 34 |  | 22d |
| 44 |  | Develop Waitlist & Notification System | 4d | 2025-07-11 | 2025-07-16 | 34 |  | 12d |
| 45 |  | Add Reminder& Notification Settings | 4d | 2025-07-17 | 2025-07-22 | 44 |  | 12d |
| 46 |  | Add Schedule& Calendar Sync | 4d | 2025-07-23 | 2025-07-28 | 45 |  | 12d |
| 47 |  | Learning Material Module Implemented | 0d | 2025-07-28 | 2025-07-28 | 46 |  | 12d |
| 48 | 4.3 | **Sprint 3 SP:** | 24d | 2025-08-14 | 2025-09-16 | 35 |  | 0d |
| 49 | 4.3.1 | **US #: 7, 9, 10, 11, 12, 21, 24, 26, 38, 42, 45, 48, 50** | 24d | 2025-08-14 | 2025-09-16 |  |  | 0d |
| 50 |  | Develop Exam Module | 9d | 2025-08-14 | 2025-08-26 | 47 |  | 0d |
| 51 |  | Quiz/Assessment Generator | 4d | 2025-08-27 | 2025-09-01 | 50 |  | 0d |
| 52 |  | Auto-Grading for Multiple Choice | 2d | 2025-09-02 | 2025-09-03 | 51 |  | 0d |
| 53 |  | Implement Progress Tracking | 2d | 2025-09-04 | 2025-09-05 | 52 |  | 0d |
| 54 |  | Add Function To Calculate Average Course Grade | 1d | 2025-09-08 | 2025-09-08 | 53 |  | 6d |
| 55 |  | Add Exam Timer& Auto-Submit | 1d | 2025-09-08 | 2025-09-08 | 53 |  | 0d |
| 56 |  | Teacher grading interface | 3d | 2025-09-09 | 2025-09-11 | 55 |  | 0d |
| 57 |  | Notification For Teacher For Late Submissions | 2d | 2025-09-12 | 2025-09-15 | 56 |  | 1d |
| 58 |  | Export Function For Exam Results | 1d | 2025-09-12 | 2025-09-12 | 56 |  | 2d |
| 59 |  | Export Function For Submissions | 1d | 2025-09-12 | 2025-09-12 | 56 |  | 0d |
| 60 |  | Add Feedback Function For Students For Courses | 2d | 2025-09-15 | 2025-09-16 | 59 |  | 0d |
| 61 |  | Add Feedback Function For Teachers For Submissions | 2d | 2025-09-15 | 2025-09-16 | 59 |  | 0d |
| 62 |  | Exam Module Implemented | 0d | 2025-09-12 | 2025-09-12 | 58 |  | 2d |
| 63 | 4.4 | **Sprint 4 SP:** | 24d | 2025-09-17 | 2025-10-20 | 48 |  | 0d |
| 64 | 4.4.1 | **US #: 13, 14, 15, 16, 30, 31, 36, 49** | 24d | 2025-09-17 | 2025-10-20 |  |  | 0d |
| 65 |  | Develop Communication Tools | 4d | 2025-09-17 | 2025-09-22 | 50 |  | 0d |
| 66 |  | Implement Messaging System | 4d | 2025-09-23 | 2025-09-26 | 65 |  | 0d |
| 67 |  | Forum/ Q&A Board | 2d | 2025-09-29 | 2025-09-30 | 66 |  | 0d |
| 68 |  | Admin panel | 2d | 2025-10-01 | 2025-10-02 | 67 |  | 0d |
| 69 |  | Dashboard with KPI's | 1d | 2025-10-03 | 2025-10-03 | 68 |  | 0d |
| 70 |  | Export of reports | 1d | 2025-10-06 | 2025-10-06 | 69 |  | 0d |

| ID | WBS | Task | Duration | Start | Finish | Predecessors | Total float |
| --- | --- | --- | --- | --- | --- | --- | --- |
| 71 |  | Add Terms of Service& Privacy Consent Flow | 2d | 2025-10-07 | 2025-10-08 | 70 | 0d |
| 72 |  | Add Multi-Language Support (Start mit DE/EN) | 2d | 2025-10-09 | 2025-10-10 | 71 | 0d |
| 73 |  | Add Function To Report Inappropriate Content | 2d | 2025-10-13 | 2025-10-14 | 72 | 4d |
| 74 |  | Integrate All Modules | 6d | 2025-10-13 | 2025-10-20 | 21, 35, 48, 71, 72 | 0d |
| 75 |  | Communication Module Implemented | 0d | 2025-10-20 | 2025-10-20 | 74 | 0d |
| 76 | 4.5 | **Sprint 5 SP:** | 24d | 2025-10-21 | 2025-11-21 | 63 | 0d |
| 77 | 4.5.1 | **US #: 22, 33, 37, 46** | 24d | 2025-10-21 | 2025-11-21 |  | 0d |
| 78 |  | Implement responsive login/registration page | 2d | 2025-10-21 | 2025-10-22 | 75 | 0d |
| 79 |  | Implement role-based navigation menu (Student/Teacher/Admin) | 4d | 2025-10-23 | 2025-10-28 | 78 | 0d |
| 80 |  | Build reusable form components (inputs, dropdowns, validation) | 4d | 2025-10-29 | 2025-11-03 | 79 | 0d |
| 81 |  | Add user feedback (toast notifications, loading spinners) | 2d | 2025-11-04 | 2025-11-05 | 80 | 0d |
| 82 |  | Implement course detail view (description, dates, instructor) | 2d | 2025-11-06 | 2025-11-07 | 81 | 0d |
| 83 |  | Add real-time exam timer with warning indicators | 2d | 2025-11-06 | 2025-11-07 | 81 | 10d |
| 84 |  | Enable autosave& resume UI for ongoing assessments | 2d | 2025-11-10 | 2025-11-11 | 82 | 8d |
| 85 |  | Display exam results& performance charts (per question/topic) | 3d | 2025-11-10 | 2025-11-12 | 82 | 7d |
| 86 |  | Build chat interface (with thread, search, and roles) | 2d | 2025-11-10 | 2025-11-11 | 82 | 0d |
| 87 |  | Implement notification center (announcements, alerts) | 2d | 2025-11-12 | 2025-11-13 | 86 | 0d |
| 88 |  | Add mobile responsiveness (mediaqueries, flex/grid adjustments) | 2d | 2025-11-14 | 2025-11-17 | 87 | 4d |
| 89 |  | Implement dark/light mode toggle | 2d | 2025-11-14 | 2025-11-17 | 87 | 0d |
| 90 |  | Apply accessibility improvements (ARIA, tab nav, contrast checks) | 4d | 2025-11-18 | 2025-11-21 | 89 | 0d |
| 91 |  | UI Implemented | 0d | 2025-11-21 | 2025-11-21 | 90 | 0d |
| 92 | 5 | **Testing** | 18d | 2025-11-24 | 2025-12-17 |  | 0d |
| 93 |  | Write Test Plans & Cases | 3d | 2025-11-24 | 2025-11-26 | 76 | 0d |
| 94 |  | Conduct Unit Testing | 4d | 2025-11-27 | 2025-12-02 | 93 | 0d |
| 95 |  | Conduct Integration Testing | 4d | 2025-12-03 | 2025-12-08 | 94 | 0d |
| 96 |  | Perform Load & Stress Testing | 3d | 2025-12-09 | 2025-12-11 | 95 | 0d |
| 97 |  | Conduct Cross-Browser & Device Testing | 4d | 2025-12-12 | 2025-12-17 | 96 | 0d |
| 98 |  | Conduct User Acceptance Testing (UAT) | 4d | 2025-12-09 | 2025-12-12 | 95 | 1d |
| 99 |  | Prepare Final Test Summary Report | 2d | 2025-12-15 | 2025-12-16 | 98 | 1d |
| 100 |  | Testing Passed | 0d | 2025-12-12 | 2025-12-12 | 98 | 3d |
| 101 | 6 | **Deployment & Rollout** | 12d | 2025-12-18 | 2026-01-02 | 92 | 0d |
| 102 |  | Set Up Rollback Plan in Case of Deployment Failure | 5d | 2025-12-18 | 2025-12-24 | 100 | 32d |
| 103 |  | Prepare Production Environment | 2d | 2025-12-18 | 2025-12-19 | 100 | 0d |
| 104 |  | Initial Deployment (Pilot) | 3d | 2025-12-22 | 2025-12-24 | 103 | 0d |
| 105 |  | Gather Pilot Feedback & Fix Bugs | 3d | 2025-12-25 | 2025-12-29 | 104 | 0d |
| 106 |  | Notify Stakeholders & Users About Go-Live | 2d | 2025-12-30 | 2025-12-31 | 105 | 0d |
| 107 |  | Full Deployment (Go-Live) | 2d | 2026-01-01 | 2026-01-02 | 106 | 0d |
| 108 |  | Full Deployment Completed | 0d | 2026-01-02 | 2026-01-02 | 107 | 0d |
| 109 | 7 | **Training & Documentation** | 17d | 2025-12-30 | 2026-01-21 | 105 | 0d |
| 110 |  | Write User Manuals | 3d | 2025-12-30 | 2026-01-01 | 105 | 11d |
| 111 |  | Record Tutorial Videos for Key Features | 9d | 2026-01-05 | 2026-01-15 | 108 | 0d |
| 112 |  | Prepare Training Materials | 3d | 2026-01-02 | 2026-01-06 | 110 | 11d |
| 113 |  | Conduct Training Sessions | 4d | 2026-01-16 | 2026-01-21 | 111 | 0d |
| 114 |  | Training Completed | 0d | 2026-01-21 | 2026-01-21 | 113 | 0d |
| 115 | 8 | **Maintenance & Evaluation** | 12d | 2026-01-22 | 2026-02-06 | 109 | 0d |
| 116 |  | Set Up Support & Monitoring | 2d | 2026-01-22 | 2026-01-23 | 108 | 0d |
| 117 |  | Review System Logs & Anomaly Reports Regularly | 3d | 2026-01-22 | 2026-01-26 | 114 | 9d |
| 118 |  | Collect User Feedback | 5d | 2026-01-26 | 2026-01-30 | 116 | 0d |
| 119 |  | Create Evaluation Report (User Stats, Issues, Recommendations) | 3d | 2026-02-02 | 2026-02-04 | 118 | 0d |
| 120 |  | Organize Evaluation Meeting with Key Stakeholders | 2d | 2026-02-05 | 2026-02-06 | 119 | 0d |
| 121 |  | Evaluation Completed | 0d | 2026-02-04 | 2026-02-04 | 119 | 2d |

## Version 2 (saved 2025-06-15)

Note of the change: Merge branch 'main' of https://github.com/a-Bit-Of-Saida/ProjM

Last finish stays 2026-02-06.

Changed:

| ID | Task | Other |
| --- | --- | --- |
| 27 | Create Session Timeout & Logout Logic | was named Create Session Timeout& Logout Logic |
| 31 | Add Tags & Search Filters for Course Catalog | was named Add Tags& Search Filters for Course Catalog |
